# راه اندازی استارتاپ

Schedule from MS Project, 2021-09-23 to 2022-08-22, status date 2022-02-06, costs in IRR, A marks actual dates.

## Calendars

- New Clalendar: Mon-Wed 08:00-12:00, 13:00-17:00; Thu 08:00-12:00; Fri off; Sat-Sun 08:00-12:00, 13:00-17:00. Exceptions (off unless hours are given): 2021-09-27 08:00-12:00, 13:00-17:00 (اربعین), 2021-10-05 (رحلت رسول), 2021-10-07 (شهادت امام رضا), 2021-10-24 (میلاد رسول), 2022-01-06 (شهادت حضرت فاطمه), 2022-02-15 (ولادت امام علی), 2022-03-01 (مبعث), 2022-03-20 (ملی شدن نفت), 2022-03-21 to 2022-03-24 (عید نوروز), 2022-04-02 (سیزده به در), 2022-05-02 to 2022-05-03 (عید فطر), 2022-05-26 (شهادت امام جعفر), 2022-06-04 (رحلت خمینی), 2022-06-05 to 2022-06-06 (قیام 15 خرداد), 2022-07-09 (عید قربان), 2022-07-17 (عید غدیر), 2022-08-07 to 2022-08-08 (تاسوعا و عاشورا).

## Resources

| Resource | Rate | Notes |
| --- | --- | --- |
| بازاریاب(B2B) |  | نکته بسیر مهم: هزیه ی استفاده از ای منبع(بازاریب بی تو بی) در 5 روز اول شروع کار صفر است و بعد از آن ساعتی 450000ریل خواهد بود. برای اطلاعات بیتر لطفا در قسمت ایفورمین سربرگ کاست را مشاهده کنی. ببخشی که کلمات انگلیی رو به فارسی نوشتم در غی ای صورت متن به هم مییت و خوندنش سخت مید. |
| کارشناس پشتیبانی | 400000 |  |
| توسعه‌دهنده Back-end | 600000 |  |
| توسعه‌دهنده Front-end | 600000 |  |
| (UI UX) دیزاینر | 600000 |  |
| طراح (گرافیست) | 500000 |  |
| مدیر پروژه | 1000000 |  |
| مدیر محصول | 800000 |  |
| مدیر کمپین | 800000 |  |
| مدیر مارکتینگ | 800000 |  |
| منابع انسانی | 400000 |  |
| مشاور (Mentor) | 400000 |  |
| مدیر فناوری | 800000 |  |
| توسعه دهنده کسب و کار | 500000 |  |
| کارشناس تولید محتوا | 400000 |  |
| تحلیلگر داده | 600000 |  |
| CRM کارشناس | 400000 |  |
| کارشناس حقوقی | 400000 |  |
| کارشناس سوشال مدیا و | 400000 |  |
| مدیر تبلیغات و رسانه | 800000 |  |
| ملزومات اداری(یادداشت را بخوانید!) | 2000000 | هزیه هر واحد ملزومات اداری دو میین ریل برآورد شده است و هر فعالی بنابر نیز میواند از چند واحد ملزومات استفاده کند. مثلا ممکن است فعالیی نیز به جوهر و منگنه و فعالیی فقط نیز به کاغذ کاهی داشته باشد به همی علت هرواحد ملزومات اداری را معادل 2000000ریل در نظر گرفتی تا هر فعالی متناسب با نیهای ملزومات را خریاری کند.) |
| کامپیوتر عادی | 150000000 |  |
| کامپیوتر حرفه ای | 280000000 |  |
| اسباب و اثاثیه(میز و صندلی و کمد و غیره) | 200000000 | اسباب و اثاثی میواند شامل موارد بسیری باشد. هر فعالی میواند چند منبع از نوع اسباب و اثاثی داشته باشد. هر واحد اسباب و اثاثی معادل 200 میین ریل پول نقد است که به فراخور نیز فعالی تبدی به اساسی های مد نظر میود.مثلا ممکنه فعلیی فقط قفسه دیاری و فعالت دیه فقط صندلی نیز داشته باشه. |
| پرینتر | 40000000 |  |
| رهن مکان |  |  |
| اجاره سرور و فضای ابری |  |  |
| خرید اینترنت |  |  |
| بودجه |  |  |

## Schedule

| ID | WBS | Task | Type | Duration | Start | Finish | Predecessors | Complete | Remaining | Baseline start | Baseline finish | Baseline duration | Total slack | Free slack | Resources | Work | Actual work | Cost | Baseline cost | Actual cost | Start Shamsi | Finish Shamsi | Shamsi Finish | Shamsi Start |
| --- | --- | --- | --- | --- | --- | --- | --- | --- | --- | --- | --- | --- | --- | --- | --- | --- | --- | --- | --- | --- | --- | --- | --- | --- |
| 1 | 1 | **فاز صفر: اقدامات اولیه** |  | 68.5d | 2021-09-23 A | 2021-12-22 |  | 99% | 0d | 2021-09-23 | 2021-12-22 | 68.5d | 0d |  |  | 3639.28h | 3639.28h | 4,644,976,000 | 4,644,976,000 | 4,494,976,000 | 1400/7/1 | 1400/10/1 | 1400/10/01 | 1400/10/1 |
| 2 | 1.1 | **بررسی بازار** |  | 32.5d | 2021-09-23 A | 2021-11-07 A |  | 100% |  | 2021-09-23 | 2021-11-07 | 32.5d |  |  |  | 1497.44h | 1497.44h | 771,440,000 | 771,440,000 | 771,440,000 | 1400/7/1 | 1400/8/16 | 1400/08/16 | 1400/8/16 |
| 3 | 1.1.1 | تحقیقات بازار |  | 15.5d | 2021-09-23 A | 2021-10-14 A |  | 100% |  | 2021-09-23 | 2021-10-14 | 15.5d |  |  | مدیر پروژه [20%]; مدیر محصول [50%]; مدیر مارکتینگ [50%]; منابع انسانی [300%]; ملزومات اداری(یادداشت را بخوانید!) [300%] | 520.8h | 520.8h | 278,800,000 | 278,800,000 | 278,800,000 | 1400/7/1 | 1400/7/22 | 1400/07/22 | 1400/7/22 |
| 4 | 1.1.2 | بررسی رقبا |  | 11d | 2021-09-23 A | 2021-10-09 A |  | 100% |  | 2021-09-23 | 2021-10-09 | 11d |  |  | مدیر پروژه [20%]; مدیر مارکتینگ [50%]; منابع انسانی [300%]; مشاور (Mentor); ملزومات اداری(یادداشت را بخوانید!) [200%] | 413.6h | 413.6h | 197,600,000 | 197,600,000 | 197,600,000 | 1400/7/1 | 1400/7/17 | 1400/07/22 | 1400/7/17 |
| 5 | 1.1.3 | امکان سنجی |  | 17d | 2021-10-16 A | 2021-11-07 A | 3, 4 | 100% |  | 2021-10-16 | 2021-11-07 | 17d |  |  | مدیر پروژه [14%]; مدیر محصول [50%]; مشاور (Mentor); منابع انسانی [200%]; مدیر فناوری [50%]; ملزومات اداری(یادداشت را بخوانید!) [200%] | 563.04h | 563.04h | 295,040,000 | 295,040,000 | 295,040,000 | 1400/7/24 | 1400/8/16 | 1400/08/06 | 1400/8/16 |
| 6 | 1.2 | **تهیه استاد مورد نیاز** |  | 12d | 2021-11-07 A | 2021-11-22 A | 2 | 100% |  | 2021-11-07 | 2021-11-22 | 12d |  |  |  | 341.76h | 341.76h | 203,600,000 | 203,600,000 | 203,600,000 | 1400/8/16 | 1400/9/1 | 1400/09/01 | 1400/9/1 |
| 7 | 1.2.1 | تهیه Business plan |  | 12d | 2021-11-07 A | 2021-11-22 A |  | 100% |  | 2021-11-07 | 2021-11-22 | 12d |  |  | توسعه دهنده کسب و کار; مدیر پروژه [20%]; مدیر محصول [14%]; مشاور (Mentor) [22%]; مدیر مارکتینگ; ملزومات اداری(یادداشت را بخوانید!); منابع انسانی | 341.76h | 341.76h | 203,600,000 | 203,600,000 | 203,600,000 | 1400/8/16 | 1400/9/1 | 1400/09/01 | 1400/9/1 |
| 8 | 1.3 | **اقدامات اجرایی** |  | 24d | 2021-11-22 A | 2021-12-22 | 6 | 99% | 0d | 2021-11-22 | 2021-12-22 | 24d | 0d |  |  | 1800.08h | 1800.08h | 3,669,936,000 | 3,669,936,000 | 3,519,936,000 | 1400/9/1 | 1400/10/1 | 1400/10/01 | 1400/10/1 |
| 9 | 1.3.1 | دریافت مجوز‌های مورد نیاز |  | 6.5d | 2021-11-22 A | 2021-11-30 A |  | 100% |  | 2021-11-22 | 2021-11-30 | 6.5d |  |  | مدیر پروژه [14%]; منابع انسانی [200%]; کارشناس حقوقی; ملزومات اداری(یادداشت را بخوانید!) | 163.28h | 163.28h | 71,680,000 | 71,680,000 | 71,680,000 | 1400/9/1 | 1400/9/9 | 1400/09/09 | 1400/9/9 |
| 10 | 1.3.2 | اخذ مجوزهای قانونی برای پروژه | milestone | 0d | 2021-11-30 A | 2021-11-30 A | 9 | 100% |  | 2021-11-30 | 2021-11-30 | 0d |  |  |  |  |  |  |  |  | 1400/9/9 | 1400/9/9 | 1400/09/10 | 1400/9/9 |
| 11 | 1.3.3 | جذب سرمایه گذار |  | 18.5d | 2021-11-22 A | 2021-12-15 A |  | 100% |  | 2021-11-22 | 2021-12-15 | 18.5d |  |  | مدیر کمپین [50%]; مدیر مارکتینگ [40%]; کارشناس حقوقی; ملزومات اداری(یادداشت را بخوانید!); مدیر پروژه [50%] | 355.2h | 355.2h | 241,760,000 | 241,760,000 | 241,760,000 | 1400/9/1 | 1400/9/24 | 1400/09/24 | 1400/9/24 |
| 12 | 1.3.4 | استخدام نیر‌وهای مورد نیاز |  | 24d | 2021-11-22 A | 2021-12-22 A |  | 100% |  | 2021-11-22 | 2021-12-22 | 24d |  |  | مدیر پروژه [14%]; منابع انسانی [400%]; مدیر تبلیغات و رسانه [33%]; مدیر فناوری [40%]; مدیر کمپین [40%]; مدیر مارکتینگ [40%]; مدیر محصول [28%]; ملزومات اداری(یادداشت را بخوانید!) [400%] | 1142.4h | 1142.4h | 620,096,000 | 620,096,000 | 620,096,000 | 1400/9/1 | 1400/10/1 | 1400/10/01 | 1400/10/1 |
| 13 | 1.3.5 | تهیه محل استقرار نیرو‌ها |  | 7d | 2021-12-05 A | 2021-12-13 | 11SS+10d | 99% | 0d | 2021-12-05 | 2021-12-13 | 7d | 0d |  | رهن مکان [0.1%]; مدیر پروژه [14%]; منابع انسانی | 63.84h | 63.84h | 30,240,000 | 30,240,000 | 30,240,000 | 1400/9/14 | 1400/9/22 | 1400/09/23 | 1400/9/22 |
| 14 | 1.3.6 | تهیه و استقرار تدارکات |  | 3d | 2021-12-14 A | 2021-12-18 | 13 | 99% | 0d | 2021-12-14 | 2021-12-18 | 3d | 4d |  | مدیر پروژه [14%]; پرینتر [600%]; منابع انسانی [300%]; اسباب و اثاثیه(میز و صندلی و کمد و غیره) [300%]; ملزومات اداری(یادداشت را بخوانید!) [200%]; خرید اینترنت [0.1%]; کامپیوتر حرفه ای [600%] | 75.36h | 75.36h | 2,706,160,000 | 2,706,160,000 | 2,556,160,000 | 1400/9/23 | 1400/9/27 | 1400/10/01 | 1400/9/27 |
| 15 | 2 | **فاز یک: ساخت محصول** |  | 120.5d | 2021-12-22 A | 2022-06-11 | 1 | 36% | 77.2d | 2021-12-22 | 2022-05-22 | 108.5d | 0d |  |  | 11271.3h | 5008.32h | 9,889,440,000 | 9,684,440,000 | 2,620,288,000 | 1400/10/1 | 1401/3/21 | 1401/03/02 | 1401/3/21 |
| 16 | 2.1 | **تحلیل و طراحی سایت و اپلیکیشن** |  | 32d | 2021-12-22 A | 2022-02-01 A |  | 100% |  | 2021-12-22 | 2022-02-01 | 32d |  |  |  | 1329.28h | 1329.28h | 833,536,000 | 833,536,000 | 833,536,000 | 1400/10/1 | 1400/11/12 | 1400/11/14 | 1400/11/12 |
| 17 | 2.1.1 | بررسی best practice های موجود |  | 6d | 2021-12-22 A | 2021-12-29 A |  | 100% |  | 2021-12-22 | 2021-12-29 | 6d |  |  | مدیر محصول [28%]; مدیر پروژه [14%]; توسعه دهنده کسب و کار [50%]; مشاور (Mentor); مدیر فناوری [40%]; ملزومات اداری(یادداشت را بخوانید!) [200%] | 111.36h | 111.36h | 68,032,000 | 68,032,000 | 68,032,000 | 1400/10/1 | 1400/10/8 | 1400/10/09 | 1400/10/8 |
| 18 | 2.1.2 | مشخص کردن نیازمندی ها |  | 6d | 2021-12-22 A | 2021-12-29 A |  | 100% |  | 2021-12-22 | 2021-12-29 | 6d |  |  | مدیر پروژه [14%]; مدیر محصول [28%]; تحلیلگر داده [50%]; منابع انسانی [300%]; مشاور (Mentor); CRM کارشناس; ملزومات اداری(یادداشت را بخوانید!) [400%] | 284.16h | 284.16h | 135,872,000 | 135,872,000 | 135,872,000 | 1400/10/1 | 1400/10/8 | 1400/10/09 | 1400/10/8 |
| 19 | 2.1.3 | طراحی فرآیندها و امکانات محصول |  | 6d | 2021-12-30 A | 2022-01-08 A | 17, 18 | 100% |  | 2021-12-30 | 2022-01-08 | 6d |  |  | ملزومات اداری(یادداشت را بخوانید!) [300%]; مدیر پروژه [14%]; (UI UX) دیزاینر; توسعه‌دهنده Back-end; توسعه‌دهنده Front-end; طراح (گرافیست); مدیر محصول [28%] | 212.16h | 212.16h | 133,872,000 | 133,872,000 | 133,872,000 | 1400/10/9 | 1400/10/18 | 1400/10/18 | 1400/10/18 |
| 20 | 2.1.4 | طراحی محصول |  | 20d | 2022-01-08 A | 2022-02-01 A | 19 | 100% |  | 2022-01-08 | 2022-02-01 | 20d |  |  | ملزومات اداری(یادداشت را بخوانید!) [500%]; مدیر محصول [57%]; مدیر پروژه [14%]; (UI UX) دیزاینر; توسعه‌دهنده Back-end; توسعه‌دهنده Front-end; مدیر فناوری [80%] | 721.6h | 721.6h | 495,760,000 | 495,760,000 | 495,760,000 | 1400/10/18 | 1400/11/12 | 1400/11/14 | 1400/11/12 |
| 21 | 2.2 | **توسعه سایت و اپلیکیشن** |  | 61d | 2021-12-22 A | 2022-03-13 | 16SS | 47% | 32.51d | 2021-12-22 | 2022-03-13 | 61d | 4.5d | 0d |  | 6074.4h | 3679.04h | 6,697,904,000 | 6,697,904,000 | 1,786,752,000 | 1400/10/1 | 1400/12/22 | 1400/12/23 | 1400/12/22 |
| 22 | 2.2.1 | تولید محتوای سایت و اپلیکیشن (متنی و ...) |  | 33d | 2021-12-22 A | 2022-02-02 A |  | 100% |  | 2021-12-22 | 2022-02-02 | 33d |  |  | مدیر پروژه [14%]; کارشناس تولید محتوا [500%]; کارشناس سوشال مدیا و [400%]; مدیر تبلیغات و رسانه; مدیر مارکتینگ [40%]; طراح (گرافیست) [200%]; ملزومات اداری(یادداشت را بخوانید!) | 3310.56h | 3310.56h | 1,549,040,000 | 1,549,040,000 | 1,549,040,000 | 1400/10/1 | 1400/11/13 | 1400/11/14 | 1400/11/13 |
| 23 | 2.2.2 | طراحی Back-end |  | 20d | 2022-02-02 A | 2022-02-28 | 20 | 18% | 16.5d | 2022-02-02 | 2022-02-28 | 20d | 7.5d | 3d | توسعه‌دهنده Back-end [400%]; مدیر پروژه [14%]; مدیر محصول [14%]; طراح (گرافیست); مدیر فناوری [20%]; ملزومات اداری(یادداشت را بخوانید!) | 876.8h | 153.44h | 531,920,000 | 531,920,000 | 94,736,000 | 1400/11/13 | 1400/12/9 | 1400/12/12 | 1400/12/9 |
| 24 | 2.2.3 | طراحی دیتا بیس |  | 10d | 2022-02-02 A | 2022-02-14 | 20 | 35% | 6.5d | 2022-02-02 | 2022-02-14 | 10d | 17.5d | 13d | مدیر پروژه [14%]; اجاره سرور و فضای ابری [0.1%]; توسعه‌دهنده Back-end [400%]; مدیر محصول [14%]; مدیر فناوری [20%]; ملزومات اداری(یادداشت را بخوانید!) | 358.4h | 125.44h | 3,726,960,000 | 3,726,960,000 | 80,736,000 | 1400/11/13 | 1400/11/25 | 1400/11/28 | 1400/11/25 |
| 25 | 2.2.4 | طراحی صفحات سایت و اپلیکیشن (ui/ux) |  | 7d | 2022-02-03 A | 2022-02-12 | 20, 22 | 36% | 4.5d | 2022-02-03 | 2022-02-12 | 7d | 4.5d | 0d | مدیر پروژه [14%]; (UI UX) دیزاینر [400%]; مدیر محصول [20%]; مدیر فناوری [14%]; ملزومات اداری(یادداشت را بخوانید!) [300%] | 250.88h | 89.6h | 163,472,000 | 163,472,000 | 62,240,000 | 1400/11/14 | 1400/11/23 | 1400/11/24 | 1400/11/23 |
| 26 | 2.2.5 | طراحی Front-end |  | 15d | 2022-02-13 | 2022-03-06 | 25 |  |  | 2022-02-13 | 2022-03-06 | 15d | 4.5d | 0d | مدیر فناوری [8%]; مدیر پروژه [14%]; توسعه‌دهنده Front-end [400%]; مدیر محصول [14%]; طراح (گرافیست) [300%]; ملزومات اداری(یادداشت را بخوانید!) [300%] | 883.2h |  | 511,920,000 | 511,920,000 |  | 1400/11/24 | 1400/12/15 | 1400/12/15 | 1400/12/15 |
| 27 | 2.2.6 | راه‌اندازی سایت (نسخه اولیه) |  | 6d | 2022-03-06 | 2022-03-13 | 26, 23, 24 |  |  | 2022-03-06 | 2022-03-13 | 6d | 4.5d |  | مدیر پروژه [14%]; مدیر محصول [28%]; توسعه دهنده کسب و کار; توسعه‌دهنده Front-end; توسعه‌دهنده Back-end; مدیر فناوری [80%]; کارشناس پشتیبانی; کارشناس تولید محتوا; کارشناس سوشال مدیا و; CRM کارشناس; ملزومات اداری(یادداشت را بخوانید!) [400%] | 394.56h |  | 214,592,000 | 214,592,000 |  | 1400/12/15 | 1400/12/22 | 1400/12/23 | 1400/12/22 |

Notes:
- 14: در ای بخش تدارکات و تجهیات مورد نیز مدیی مثل کامپیتر ها و اثاثی مورد نیز آن ها تخصی داده میود. اثاثی و کامپیتر های مورد نیز سای بخش ها مثل بخش پشتیانی در همان مرحله تخصی داده میوند (مطابق توصی دستیر آموزشی محترم).دقت داشته باشی که کامپیتر هایی که مثلا برای بخش پشتیانی میری کامپیتر هایی است که مستقر مینی تا در پاین راه اندازی استارتاپ, نیو های پشتیانی با آن ها کار کنند و برای استفاده نیوهای موقت پروژه نیت. فرض شده است که نیوهایی مقل گرافیت و توسعه دهنده بک اند و ... طبق توافق با شرکت های نرم افزاری به صورت موقت در اختیر ما قرار مییند و ما صرفا حقوق آن ها را پرداخت مینی تا امور محوله را انجام دهند و لپتاپ و تجهیات بر عهده خودشان ی شرکت نرم افزاری است که واسطه به کار گیی آن ها شده و آن ها از طری دور کاری وظایشان را انجام میهند و حقوقشان را مییند پس نیزی نیت که منبعی مثل کامپیتر اجاره ای به آن ها تخصی دهی و ای فرض به واقعی امور جامعه بسیر نزدی تر است.همچنی ما ی هزیه ایترنت داری که معمولا با توجه به ابعاد شرکت معمول است که یبار برای مدت پروژه ایترنت نامحدود به قیت روز خریاری میود و سای فعالی ها بنتابر نیز از آن استفاده مینند که چون ای هزیه یبار است و برای کل پروژه است و از طرفی مقدار ایترنت نامحدود است هزیه آن را نمیوان جدا جدا به تسک ها تخصی داد پس یبار برای همیه ایترنت نامحدود را میری و تمام. به قول معروف مرگ یبار شین یبار

| ID | WBS | Task | Type | Duration | Start | Finish | Predecessors | Baseline start | Baseline finish | Baseline duration | Total slack | Free slack | Constraint | Resources | Work | Cost | Baseline cost | Start Shamsi | Finish Shamsi | Shamsi Finish | Shamsi Start |
| --- | --- | --- | --- | --- | --- | --- | --- | --- | --- | --- | --- | --- | --- | --- | --- | --- | --- | --- | --- | --- | --- |
| 28 | 2.3 | **تست محصول** |  | 59.5d | 2022-03-14 | 2022-06-11 | 21 | 2022-03-14 | 2022-05-22 | 47.5d | 0d |  |  |  | 3867.6h | 2,358,000,000 | 2,153,000,000 | 1400/12/23 | 1401/3/21 | 1401/03/02 | 1401/3/21 |
| 29 | 2.3.1 | تست سیستم |  | 20d | 2022-03-14 | 2022-04-14 |  | 2022-03-14 | 2022-04-14 | 20d | 9.5d |  |  | مدیر پروژه [14%]; توسعه‌دهنده Back-end [200%]; تحلیلگر داده; مدیر فناوری [40%]; ملزومات اداری(یادداشت را بخوانید!) | 566.4h | 363,600,000 | 363,600,000 | 1400/12/23 | 1401/1/25 | 1041/01/27 | 1401/1/25 |
| 30 | 2.3.2 | تست سایت |  | 20d | 2022-03-14 | 2022-04-14 |  | 2022-03-14 | 2022-04-14 | 20d | 9.5d |  |  | مدیر پروژه [14%]; توسعه‌دهنده Front-end [200%]; (UI UX) دیزاینر; مدیر محصول [28%]; توسعه‌دهنده Back-end [200%]; ملزومات اداری(یادداشت را بخوانید!) | 867.2h | 540,240,000 | 540,240,000 | 1400/12/23 | 1401/1/25 | 1041/01/27 | 1401/1/25 |
| 31 | 2.3.3 | تست اپلیکیشن |  | 25d | 2022-03-14 | 2022-04-20 |  | 2022-03-14 | 2022-04-14 | 20d | 4.5d |  |  | مدیر پروژه [14%]; مدیر محصول [28%]; توسعه‌دهنده Back-end [200%]; توسعه‌دهنده Front-end [200%]; (UI UX) دیزاینر; مدیر تبلیغات و رسانه [33%]; ملزومات اداری(یادداشت را بخوانید!) | 1150h | 727,600,000 | 582,480,000 | 1400/12/23 | 1401/1/31 | 1041/01/27 | 1401/1/31 |
| 32 | 2.3.4 | رفع ایرادات احتمالی |  | 30d | 2022-04-27 | 2022-06-11 | 29, 30, 31 | 2022-04-16 | 2022-05-22 | 27.5d | 0d |  | start no earlier than 2022-04-27 | توسعه‌دهنده Back-end; توسعه‌دهنده Front-end; طراح (گرافیست); (UI UX) دیزاینر; مدیر پروژه [7%]; کارشناس تولید محتوا; مدیر محصول [28%]; ملزومات اداری(یادداشت را بخوانید!) [400%] | 1284h | 726,560,000 | 666,680,000 | 1401/2/7 | 1401/3/21 | 1401/03/02 | 1401/3/21 |
| 33 | 3 | **فاز دو: مارکتینگ** |  | 101.5d | 2022-03-19 | 2022-08-14 | 15SS+65d | 2022-03-19 | 2022-07-26 | 89.5d | 7d | 0d |  |  | 16022.8h | 13,380,944,000 | 13,070,112,000 | 1400/12/28 | 1401/5/23 | 1401/05/15 | 1401/5/23 |
| 34 | 3.1 | **B2B مارکتینگ** |  | 30d | 2022-03-19 | 2022-05-04 |  | 2022-03-19 | 2022-05-04 | 30d | 33d |  |  |  | 2318.4h | 1,940,240,000 | 1,940,240,000 | 1400/12/28 | 1401/2/14 | 1401/02/24 | 1401/2/14 |
| 35 | 3.1.1 | بازاریابی و جذب پزشکان برای خدمت رسانی |  | 20d | 2022-03-19 | 2022-04-19 |  | 2022-03-19 | 2022-04-19 | 20d | 33d | 0d |  | مدیر پروژه [14%]; بازاریاب(B2B) [400%]; منابع انسانی [400%]; مشاور (Mentor); کارشناس حقوقی; مدیر مارکتینگ [28%]; ملزومات اداری(یادداشت را بخوانید!) [1000%]; کامپیوتر عادی [200%]; پرینتر; اسباب و اثاثیه(میز و صندلی و کمد و غیره) | 1667.2h | 1,111,040,000 | 1,111,040,000 | 1400/12/28 | 1401/1/30 | 1401/02/08 | 1401/1/30 |
| 36 | 3.1.2 | عقد قرار داد با خدمت دهندگان |  | 10d | 2022-04-20 | 2022-05-04 | 35 | 2022-04-20 | 2022-05-04 | 10d | 33d | 0d |  | مدیر پروژه [14%]; کارشناس حقوقی [300%]; توسعه دهنده کسب و کار; بازاریاب(B2B) [400%]; ملزومات اداری(یادداشت را بخوانید!) [700%]; کامپیوتر عادی [200%]; اسباب و اثاثیه(میز و صندلی و کمد و غیره); پرینتر | 651.2h | 829,200,000 | 829,200,000 | 1401/1/31 | 1401/2/14 | 1401/02/24 | 1401/2/14 |
| 37 | 3.2 | **R&D** |  | 77.5d | 2022-03-19 | 2022-07-10 |  | 2022-03-19 | 2022-06-23 | 65.5d | 31d |  |  |  | 7665.36h | 8,627,776,000 | 8,316,944,000 | 1400/12/28 | 1401/4/19 | 1401/04/05 | 1401/4/19 |
| 38 | 3.2.1 | بردن خدمات تحت پوشش بیمه |  | 30d | 2022-05-05 | 2022-06-16 | 36 | 2022-05-05 | 2022-06-16 | 30d | 48.5d |  |  | مدیر پروژه [14%]; کارشناس حقوقی [200%]; مدیر مارکتینگ [20%]; مشاور (Mentor); کارشناس سوشال مدیا و; منابع انسانی [400%]; ملزومات اداری(یادداشت را بخوانید!) [500%]; کامپیوتر عادی [200%]; اسباب و اثاثیه(میز و صندلی و کمد و غیره); پرینتر | 2001.6h | 1,390,000,000 | 1,390,000,000 | 1401/2/15 | 1401/3/26 | 1401/04/05 | 1401/3/26 |
| 39 | 3.2.2 | طراحی گیمیفیکیشن در خدمات |  | 21d | 2022-03-28 | 2022-04-25 |  | 2022-03-19 | 2022-04-19 | 20d | 84.5d |  | start no earlier than 2022-03-28 | طراح (گرافیست) [200%]; توسعه‌دهنده Back-end [150%]; توسعه‌دهنده Front-end [150%]; مدیر مارکتینگ [40%]; مدیر کمپین [50%]; مدیر تبلیغات و رسانه [33%]; مدیر پروژه [7%]; ملزومات اداری(یادداشت را بخوانید!) [200%]; کامپیوتر حرفه ای [200%]; اسباب و اثاثیه(میز و صندلی و کمد و غیره); پرینتر | 1058.4h | 1,451,472,000 | 1,420,640,000 | 1401/1/8 | 1401/2/5 | 1401/02/08 | 1401/2/5 |
| 40 | 3.2.3 | تحقیق و توسعه خدمات |  | 15d | 2022-03-19 | 2022-04-13 |  | 2022-03-19 | 2022-04-13 | 15d | 93.5d |  |  | مدیر فناوری [33%]; تحلیلگر داده; مدیر پروژه [14%]; مشاور (Mentor); مدیر محصول [28%]; توسعه دهنده کسب و کار; ملزومات اداری(یادداشت را بخوانید!) [200%]; کامپیوتر حرفه ای [300%]; اسباب و اثاثیه(میز و صندلی و کمد و غیره) [150%]; پرینتر | 450h | 1,439,360,000 | 1,439,360,000 | 1400/12/28 | 1401/1/24 | 1401/02/03 | 1401/1/24 |
| 41 | 3.2.4 | بررسی رفتار مشتری |  | 22d | 2022-06-12 | 2022-07-10 | 32 | 2022-05-23 | 2022-06-23 | 22d | 0d |  |  | تحلیلگر داده [300%]; مدیر پروژه [14%]; مدیر مارکتینگ [33%]; CRM کارشناس [300%]; منابع انسانی [300%]; ملزومات اداری(یادداشت را بخوانید!) [800%]; کامپیوتر حرفه ای [300%]; اسباب و اثاثیه(میز و صندلی و کمد و غیره); پرینتر | 1666.72h | 1,906,304,000 | 1,626,304,000 | 1401/3/22 | 1401/4/19 | 1401/04/04 | 1401/4/19 |
| 42 | 3.2.5 | بهبود محصول |  | 22d | 2022-06-12 | 2022-07-10 | 32 | 2022-05-23 | 2022-06-23 | 22d | 0d |  |  | (UI UX) دیزاینر [200%]; توسعه‌دهنده Back-end [200%]; توسعه‌دهنده Front-end [200%]; طراح (گرافیست) [200%]; کارشناس تولید محتوا [200%]; کارشناس سوشال مدیا و [200%]; مدیر پروژه [14%]; کارشناس پشتیبانی [200%]; ملزومات اداری(یادداشت را بخوانید!) [200%]; کامپیوتر حرفه ای [300%]; اسباب و اثاثیه(میز و صندلی و کمد و غیره) [150%]; پرینتر | 2488.64h | 2,440,640,000 | 2,440,640,000 | 1401/3/22 | 1401/4/19 | 1401/04/04 | 1401/4/19 |
| 43 | 3.3 | **دیجیتال مارکتینگ** |  | 101.5d | 2022-03-19 | 2022-08-14 |  | 2022-03-19 | 2022-07-26 | 89.5d | 7d |  |  |  | 6039.04h | 2,812,928,000 | 2,812,928,000 | 1400/12/28 | 1401/5/23 | 1401/05/05 | 1401/5/23 |
| 44 | 3.3.1 | برگزاری کمپین معرفی محصول |  | 24d | 2022-07-11 | 2022-08-14 | 42, 41 | 2022-06-25 | 2022-07-26 | 24d | 0d |  |  | مدیر کمپین [50%]; مدیر پروژه [14%]; مدیر تبلیغات و رسانه [33%]; منابع انسانی [500%]; مدیر مارکتینگ [40%]; ملزومات اداری(یادداشت را بخوانید!) [1000%] | 1223.04h | 619,808,000 | 619,808,000 | 1401/4/20 | 1401/5/23 | 1401/05/05 | 1401/5/23 |
| 45 | 3.3.2 | تبلیغ برند و خدمات در شبکه های اجتماعی |  | 70d | 2022-03-19 | 2022-06-29 |  | 2022-03-19 | 2022-06-29 | 70d | 38.5d | 31.5d |  | کارشناس سوشال مدیا و [200%]; کارشناس تولید محتوا [200%]; مدیر مارکتینگ [16%]; مدیر پروژه [7%]; مدیر تبلیغات و رسانه [33%]; ملزومات اداری(یادداشت را بخوانید!) [200%] | 2553.6h | 1,158,720,000 | 1,158,720,000 | 1400/12/28 | 1401/4/8 | 1401/04/19 | 1401/4/8 |
| 46 | 3.3.3 | مدیریت شبکه‌‌های اجتماعی |  | 70d | 2022-03-19 | 2022-06-29 |  | 2022-03-19 | 2022-06-29 | 70d | 38.5d | 31.5d |  | کارشناس سوشال مدیا و [200%]; طراح (گرافیست) [200%]; مدیر پروژه [4%]; ملزومات اداری(یادداشت را بخوانید!) [200%] | 2262.4h | 1,034,400,000 | 1,034,400,000 | 1400/12/28 | 1401/4/8 | 1401/04/19 | 1401/4/8 |
| 47 | 3.3.4 | تهیه گزارشات مالی | milestone | 0d | 2022-08-14 | 2022-08-14 | 44, 45, 46 | 2022-07-26 | 2022-07-26 | 0d | 7d |  |  |  |  |  |  | 1401/5/23 | 1401/5/23 | 1401/05/05 | 1401/5/23 |
| 48 | 4 | **فاز سه: پشتیبانی** |  | 56.5d | 2022-06-07 | 2022-08-22 | 33SS+52d | 2022-06-07 | 2022-08-06 | 45.5d | 0d |  |  |  | 3511.88h | 6,863,448,000 | 6,694,920,000 | 1401/3/17 | 1401/5/31 | 1401/05/15 | 1401/5/31 |
| 49 | 4.1 | **پشتیبانی از خدمات** |  | 56.5d | 2022-06-07 | 2022-08-22 |  | 2022-06-07 | 2022-08-06 | 45.5d | 0d |  |  |  | 2374.84h | 2,757,640,000 | 2,607,640,000 | 1401/3/17 | 1401/5/31 | 1401/05/15 | 1401/5/31 |
| 50 | 4.1.1 | پشتیبانی مشتریان |  | 31d | 2022-07-11 | 2022-08-22 | 44SS, 56 | 2022-06-25 | 2022-08-04 | 31d | 0d |  |  | مدیر پروژه [7%]; کارشناس پشتیبانی; CRM کارشناس [400%]; ملزومات اداری(یادداشت را بخوانید!) [400%]; کامپیوتر عادی [500%]; اسباب و اثاثیه(میز و صندلی و کمد و غیره) [200%]; پرینتر [200%] | 1257.36h | 1,751,360,000 | 1,601,360,000 | 1401/4/20 | 1401/5/31 | 1401/05/15 | 1401/5/31 |
| 51 | 4.1.2 | پشتیبانی پزشکان |  | 45.5d | 2022-06-07 | 2022-08-06 | 35, 36 | 2022-06-07 | 2022-08-06 | 45.5d | 11d |  |  | مدیر پروژه [7%]; کارشناس پشتیبانی; CRM کارشناس [200%]; ملزومات اداری(یادداشت را بخوانید!) [200%]; کامپیوتر عادی [200%]; اسباب و اثاثیه(میز و صندلی و کمد و غیره); پرینتر | 1117.48h | 1,006,280,000 | 1,006,280,000 | 1401/3/17 | 1401/5/15 | 1401/05/15 | 1401/5/15 |

| ID | WBS | Task | Type | Duration | Start | Finish | Predecessors | Baseline start | Baseline finish | Baseline duration | Total slack | Free slack | Constraint | Resources | Work | Cost | Baseline cost | Start Shamsi | Finish Shamsi | Shamsi Finish | Shamsi Start |
| --- | --- | --- | --- | --- | --- | --- | --- | --- | --- | --- | --- | --- | --- | --- | --- | --- | --- | --- | --- | --- | --- |
| 52 | 4.2 | **پشتیبانی فنی** |  | 31d | 2022-07-11 | 2022-08-22 | 42 | 2022-06-25 | 2022-08-04 | 31d | 0d |  |  |  | 810.96h | 1,158,640,000 | 1,158,640,000 | 1401/4/20 | 1401/5/31 | 1401/05/15 | 1401/5/31 |
| 53 | 4.2.1 | پشتیبانی سایت و اپلیکیشن |  | 31d | 2022-07-11 | 2022-08-22 |  | 2022-06-25 | 2022-08-04 | 31d | 0d |  |  | مدیر فناوری [20%]; مدیر پروژه [7%]; کارشناس پشتیبانی [300%]; ملزومات اداری(یادداشت را بخوانید!) [200%]; کامپیوتر حرفه ای [200%]; اسباب و اثاثیه(میز و صندلی و کمد و غیره); پرینتر | 810.96h | 1,158,640,000 | 1,158,640,000 | 1401/4/20 | 1401/5/31 | 1401/05/15 | 1401/5/31 |
| 54 | 4.3 | **پشتیبانی کار کنان** |  | 14d | 2022-06-12 | 2022-06-28 | 15 | 2022-06-07 | 2022-06-22 | 13d | 8d |  |  |  | 326.08h | 2,947,168,000 | 2,928,640,000 | 1401/3/22 | 1401/4/7 | 1401/04/01 | 1401/4/7 |
| 55 | 4.3.1 | آموزش کارکنان |  | 6d | 2022-06-12 | 2022-06-19 |  | 2022-06-07 | 2022-06-13 | 5d | 8d | 0d | start no earlier than 2022-06-12 | مدیر پروژه [14%]; مدیر تبلیغات و رسانه [33%]; مدیر فناوری [40%]; مدیر کمپین [40%]; مدیر مارکتینگ [31%]; مدیر محصول [28%]; مشاور (Mentor) [200%]; ملزومات اداری(یادداشت را بخوانید!) [700%]; کامپیوتر حرفه ای [300%]; کامپیوتر عادی [300%]; اسباب و اثاثیه(میز و صندلی و کمد و غیره) [400%]; پرینتر [300%] | 185.28h | 2,335,168,000 | 2,316,640,000 | 1401/3/22 | 1401/3/29 | 1401/03/23 | 1401/3/29 |
| 56 | 4.3.2 | پشتیبانی کارکنان |  | 8d | 2022-06-19 | 2022-06-28 | 55 | 2022-06-13 | 2022-06-22 | 8d | 8d | 0d |  | کارشناس حقوقی; مدیر پروژه [20%]; CRM کارشناس; ملزومات اداری(یادداشت را بخوانید!) [400%]; کامپیوتر عادی [200%]; پرینتر; اسباب و اثاثیه(میز و صندلی و کمد و غیره) | 140.8h | 612,000,000 | 612,000,000 | 1401/3/29 | 1401/4/7 | 1401/04/01 | 1401/4/7 |
| 57 | 4.3.3 | برگزاری جلسه با کادر اجرایی پروژه | milestone | 0d | 2022-06-28 | 2022-06-28 | 56 | 2022-06-22 | 2022-06-22 | 0d | 39d |  |  |  |  |  |  | 1401/4/7 | 1401/4/7 | 1401/04/01 | 1401/4/7 |
